Schedule from GanttProject, 2017-02-13 to 2017-04-04.

## Calendars

- Project calendar: Mon-Sun working.

## Resources

| Resource |
| --- |
| mirfan |
| ashahid |
| msalman |
| mkaleem |

## Schedule

| ID | WBS | Task | Duration | Start | Finish | Complete | Resources | Jira |
| --- | --- | --- | --- | --- | --- | --- | --- | --- |
| 1 | 1 | **Project** | 51d | 2017-02-13 | 2017-04-04 | 43% |  |  |
| 2 | 1.1 | **Device Manager Remodal** | 45d | 2017-02-13 | 2017-03-29 | 48% |  | BSP-8299 |
| 3 | 1.1.1 | **Design** | 16d | 2017-02-13 | 2017-02-28 | 100% |  | BSP-8227 |
| 4 | 1.1.1.1 | Device Manager Code Review | 16d | 2017-02-13 | 2017-02-28 | 100% | mirfan | BSP-8223 |
| 5 | 1.1.1.2 | Prepare a proposal to remodal Device Manager | 16d | 2017-02-13 | 2017-02-28 | 100% | ashahid | BSP-8222 |
| 6 | 1.1.2 | **Device Manager implementation** | 17d | 2017-03-13 | 2017-03-29 | 1% |  | BSP-8228 |
| 7 | 1.1.2.1 | **Device Labels update** | 1d | 2017-03-13 | 2017-03-13 | 3% | mirfan | OS-7561 |
| 8 | 1.1.2.1.1 | Implement new labeling scheme for Device Manager | 1d | 2017-03-13 | 2017-03-13 | 6% | msalman | OS-7541 |
| 9 | 1.1.2.1.2 | Update the Device Manager metadata files to generate labels. | 1d | 2017-03-13 | 2017-03-13 |  | msalman | OS-7542 |
| 10 | 1.1.2.2 | **Updates to Device Registry** | 2d | 2017-03-13 | 2017-03-14 | 10% | mirfan | OS-7543 |
| 11 | 1.1.2.2.1 | Removal of device sessions form Device Manager. | 1d | 2017-03-13 | 2017-03-13 | 50% | mkaleem | OS-7544 |
| 12 | 1.1.2.2.2 | Update device Open/Close mechanism to handle removal of device sessions form Device Manager | 2d | 2017-03-13 | 2017-03-14 |  | mkaleem | OS-7545 |
| 13 | 1.1.2.3 | **Device Functionality Lists** | 1d | 2017-03-13 | 2017-03-13 |  | mirfan | OS-7546 |
| 14 | 1.1.2.3.1 | Add support of Functionality lists to Device Manager | 1d | 2017-03-13 | 2017-03-13 |  | mkaleem | OS-7547 |
| 15 | 1.1.2.3.2 | Update device registration flow via DVC_Dev_Register. | 1d | 2017-03-13 | 2017-03-13 |  | mkaleem | OS-7548 |
| 16 | 1.1.2.3.3 | Update device unregistration flow via DVC_Dev_Unregister. | 1d | 2017-03-13 | 2017-03-13 |  | mkaleem | OS-7549 |
| 17 | 1.1.2.4 | **Device Manager New APIs** | 1d | 2017-03-13 | 2017-03-13 |  | mirfan | OS-7550 |
| 18 | 1.1.2.4.1 | Implement DVC_Dev_Request API | 1d | 2017-03-13 | 2017-03-13 |  | msalman | OS-7551 |
| 19 | 1.1.2.4.2 | Implement DVC_Dev_Get_Instance API. | 1d | 2017-03-13 | 2017-03-13 |  | msalman | OS-7552 |
| 20 | 1.1.2.5 | **Device Manager Deprecated APIs** | 1d | 2017-03-13 | 2017-03-13 |  | mirfan | OS-7553 |
| 21 | 1.1.2.5.1 | Remove Device Manager's deprecated APIs (DVC_Dev_Read/Write and DVC_Dev_IOCTL) | 1d | 2017-03-13 | 2017-03-13 |  | msalman | OS-7554 |
| 22 | 1.1.2.6 | **Device Discovery Mechanism** | 2d | 2017-03-13 | 2017-03-14 |  | mirfan | OS-7556 |
| 23 | 1.1.2.6.1 | Remove known_id_list and its references from device discovery | 1d | 2017-03-13 | 2017-03-13 |  | mkaleem | OS-7557 |
| 24 | 1.1.2.6.2 | Implement APIs and code updated for cases where new device is added to the system | 2d | 2017-03-13 | 2017-03-14 |  | mkaleem | OS-7558 |
| 25 | 1.1.2.6.3 | Implement APIs and code updated for cases where new listener is added to the system | 2d | 2017-03-13 | 2017-03-14 |  | mkaleem | OS-7559 |
| 26 | 1.1.2.6.4 | Update internals of DVC_Reg_Change_Search in accordance with the new design proposal. | 2d | 2017-03-13 | 2017-03-14 |  | mkaleem | OS-7560 |
| 27 | 1.1.2.7 | Prototype Power management services with new Device Manager. | 4d | 2017-03-13 | 2017-03-16 |  | msalman | OS-7555 |
| 28 | 1.1.2.8 | Incorporate Design Review Feedback | 5d | 2017-03-13 | 2017-03-17 |  | mirfan | BSP-8226 |

| ID | WBS | Task | Duration | Start | Finish | Complete | Resources | Jira |
| --- | --- | --- | --- | --- | --- | --- | --- | --- |
| 29 | 1.2 | **Unified Serial Driver** | 25d | 2017-02-28 | 2017-03-24 | 52% |  | BSP-8221 |
| 30 | 1.2.1 | **Design** | 18d | 2017-02-28 | 2017-03-17 | 65% |  | BSP-8227 |
| 31 | 1.2.1.1 | Unified BSP Interface proposal | 17d | 2017-03-01 | 2017-03-17 | 42% | ashahid | BSP-8225 |
| 32 | 1.2.1.2 | Unified BSP Interface proposal | 11d | 2017-02-28 | 2017-03-10 | 100% | mirfan | BSP-8264 |
| 33 | 1.2.2 | Serial Driver implementation | 5d | 2017-03-20 | 2017-03-24 |  |  | BSP-8229 |
| 34 | 1.3 | **Unified Ethernet Driver** | 9d | 2017-03-27 | 2017-04-04 |  |  | BSP-8306 |
| 35 | 1.3.1 | Ethernet driver Implementation for Sabrelite | 9d | 2017-03-27 | 2017-04-04 |  |  | BSP-8230 |
